# Proyecto Trascendental

Schedule from MS Project, 2020-11-09 to 2020-11-30, costs in $.

## Calendars

- Calendario Trascendental: Mon-Fri 06:00-12:00, 13:00-18:00; Sat-Sun off. Exceptions (off unless hours are given): 2020-11-16 (Independencia de Cartagena).

## Resources

| Resource | Rate |
| --- | --- |
| Laura Tatiana Gómez Castillo | 4100 |
| Lady Daniela Díaz Sánchez | 4100 |
| Yáxul Santiago Cárdenas Hincapié | 4100 |
| Brayan Gómez López | 4100 |
| Paulo Sebastian Correa Espinosa | 4100 |
| Computador | 1000000 |
| Internet | 80000 |
| Escritorio | 200000 |
| Silla | 100000 |
| Servicio de Luz |  |

## Schedule

| ID | WBS | Task | Type | Duration | Start | Finish | Predecessors | Total slack | Free slack | Constraint | Resources | Work | Cost |
| --- | --- | --- | --- | --- | --- | --- | --- | --- | --- | --- | --- | --- | --- |
| 1 | 1 | **Proyecto Trascendental** |  | 20d? | 2020-11-09 | 2020-11-30 |  | 0d |  |  |  | 1011.25h | 74,610,325 |
| 2 | 1.1 | **Análisis** |  | 20d? | 2020-11-09 | 2020-11-30 |  | 0d |  |  |  | 355h | 29,095,500 |
| 3 | 1.1.1 | **Componente Metodológico** |  | 20d | 2020-11-09 | 2020-11-30 |  | 0d |  |  |  | 45h | 13,984,500 |
| 4 | 1.1.1.1 | **Reuniones** |  | 20d | 2020-11-09 | 2020-11-30 |  | 0d |  |  |  |  |  |
| 5 | 1.1.1.1.1 | Reuniones 1 | manual | 6h | 2020-11-09 | 2020-11-09 |  |  |  | start no earlier than 2020-11-09 |  |  |  |
| 6 | 1.1.1.1.2 | Reuniones 2 | manual | 6h | 2020-11-16 | 2020-11-16 |  |  |  | start no earlier than 2020-11-16 |  |  |  |
| 7 | 1.1.1.1.3 | Reuniones 3 | manual | 6h | 2020-11-23 | 2020-11-23 |  |  |  | start no earlier than 2020-11-23 |  |  |  |
| 8 | 1.1.1.1.4 | Reuniones 4 | manual | 6h | 2020-11-30 | 2020-11-30 |  |  |  | start no earlier than 2020-11-30 |  |  |  |
| 9 | 1.1.1.2 | INICIO | milestone | 0d | 2020-11-09 | 2020-11-09 |  | 3.38d | 0d |  |  |  |  |
| 10 | 1.1.1.3 | Nombre del proyecto |  | 2h | 2020-11-09 | 2020-11-09 | 9 | 3.38d | 0d |  | Yáxul Santiago Cárdenas Hincapié; Computador; Escritorio; Internet; Silla | 2h | 1,388,200 |
| 11 | 1.1.1.4 | Objetivo general |  | 3h | 2020-11-09 | 2020-11-09 | 10SS | 3.38d | 0d |  | Laura Tatiana Gómez Castillo; Lady Daniela Díaz Sánchez; Computador [200%]; Escritorio [200%]; Internet [200%]; Silla [200%] | 6h | 2,784,600 |
| 12 | 1.1.1.5 | Objetivos específicos |  | 2h | 2020-11-10 | 2020-11-10 | 11 | 3.62d | 0d |  | Paulo Sebastian Correa Espinosa; Computador; Escritorio; Internet; Silla | 2h | 1,388,200 |
| 13 | 1.1.1.6 | Planteamiento del problema |  | 8h | 2020-11-10 | 2020-11-10 | 12SS | 3.62d | 0d |  | Lady Daniela Díaz Sánchez; Laura Tatiana Gómez Castillo; Yáxul Santiago Cárdenas Hincapié; Computador [300%]; Escritorio [300%]; Internet [300%]; Silla [300%] | 24h | 4,238,400 |
| 14 | 1.1.1.7 | Alcance del proyecto |  | 3h | 2020-11-10 | 2020-11-10 | 13 | 3.62d | 0d |  | Yáxul Santiago Cárdenas Hincapié; Brayan Gómez López; Computador [200%]; Escritorio [200%]; Internet [200%]; Silla [200%] | 6h | 2,784,600 |
| 15 | 1.1.1.8 | Justificación |  | 5h | 2020-11-10 | 2020-11-11 | 14SS | 3.62d | 0d |  | Laura Tatiana Gómez Castillo; Computador; Escritorio; Internet; Silla | 5h | 1,400,500 |
| 16 | 1.1.2 | **Algoritmia** |  | 8.06d | 2020-11-09 | 2020-11-18 |  | 11.94d |  |  |  | 240h | 7,884,000 |
| 17 | 1.1.2.1 | DFD y PSEINT |  | 2.84d | 2020-11-09 | 2020-11-18 | 10SS | 11.94d |  |  | Brayan Gómez López [400%]; Lady Daniela Díaz Sánchez [400%]; Laura Tatiana Gómez Castillo [400%]; Paulo Sebastian Correa Espinosa [400%]; Yáxul Santiago Cárdenas Hincapié [400%]; Computador [500%]; Escritorio [500%]; Internet [500%]; Silla [500%] | 240h | 7,884,000 |
| 18 | 1.1.3 | **Logo** |  | 0.25d | 2020-11-10 | 2020-11-10 |  | 4.25d |  |  |  | 2h | 1,388,200 |
| 19 | 1.1.3.1 | Definición de color y estilo |  | 2h | 2020-11-10 | 2020-11-10 | 15SS | 3.62d | 0d |  | Yáxul Santiago Cárdenas Hincapié; Computador; Escritorio; Internet; Silla | 2h | 1,388,200 |
| 20 | 1.1.4 | **Levantamiento de información** |  | 3d? | 2020-11-10 | 2020-11-13 |  | 4.25d |  |  |  | 68h | 5,838,800 |
| 21 | 1.1.4.1 | Entrevistas |  | 3d | 2020-11-10 | 2020-11-13 | 19 | 3.62d | 0d |  | Lady Daniela Díaz Sánchez; Computador; Escritorio; Internet; Silla | 24h | 1,478,400 |
| 22 | 1.1.4.2 | Personal Operativo |  | 1.5d? | 2020-11-10 | 2020-11-11 | 21SS | 3.62d | 0d |  | Lady Daniela Díaz Sánchez; Computador; Escritorio; Internet; Silla | 12h | 1,429,200 |
| 23 | 1.1.4.3 | Encuestas |  | 2d | 2020-11-10 | 2020-11-12 | 22SS | 3.62d | 0d |  | Laura Tatiana Gómez Castillo; Yáxul Santiago Cárdenas Hincapié; Computador [200%]; Escritorio [200%]; Internet [200%]; Silla [200%] | 32h | 2,891,200 |
| 24 | 1.1.4.4 | Personal Administrativo |  | 2d? | 2020-11-10 | 2020-11-12 | 23SS | 3.62d | 0d |  |  |  |  |
| 25 | 1.1.4.5 | FIN DEL ANALISIS | milestone | 0d | 2020-11-12 | 2020-11-12 | 24 | 15.75d | 0d |  | Servicio de Luz |  | 40,000 |

Notes:
- 5: Tatiana Tovar realiza las siguientes reuniones para revisar el proceso de creacion del proyecto Trascendental
- 24: Personal Administrativo de la empresa Disser Ingenieria S.A.S.

| ID | WBS | Task | Type | Duration | Start | Finish | Predecessors | Total slack | Free slack | Constraint | Resources | Work | Cost |
| --- | --- | --- | --- | --- | --- | --- | --- | --- | --- | --- | --- | --- | --- |
| 26 | 1.2 | **Planeación** |  | 11.88d | 2020-11-12 | 2020-11-25 |  | 3.88d |  |  |  | 656.25h | 45,514,825 |
| 27 | 1.2.1 | **Mapa de procesos** |  | 1.5d | 2020-11-12 | 2020-11-13 |  | 4.25d |  |  |  | 53h | 7,117,300 |
| 28 | 1.2.1.1 | INICIO | milestone | 0d | 2020-11-12 | 2020-11-12 | 25 | 15.75d |  |  |  |  |  |
| 29 | 1.2.1.2 | Mapa de procesos |  | 5h | 2020-11-12 | 2020-11-12 | 24 | 3.62d | 0d |  | Laura Tatiana Gómez Castillo; Computador; Escritorio; Internet; Silla | 5h | 1,400,500 |
| 30 | 1.2.1.3 | Diagrama de flujo de proceso BPMN |  | 1.5d | 2020-11-12 | 2020-11-13 | 29SS | 3.62d | 0d |  | Lady Daniela Díaz Sánchez; Laura Tatiana Gómez Castillo; Paulo Sebastian Correa Espinosa; Yáxul Santiago Cárdenas Hincapié; Computador [400%]; Escritorio [400%]; Internet [400%]; Silla [400%] | 48h | 5,716,800 |
| 31 | 1.2.2 | **Informe de Requerimientos (Estándar IEEE 830)** |  | 5d | 2020-11-13 | 2020-11-20 |  | 4.25d |  |  |  | 144h | 11,634,600 |
| 32 | 1.2.2.1 | Requerimientos funcionales |  | 2.62d | 2020-11-13 | 2020-11-18 | 30 | 3.62d | 0d |  | Yáxul Santiago Cárdenas Hincapié; Laura Tatiana Gómez Castillo; Computador [200%]; Escritorio [200%]; Internet [200%]; Silla [200%] | 48h | 2,961,000 |
| 33 | 1.2.2.2 | Requerimientos No funcionales |  | 3d | 2020-11-13 | 2020-11-18 | 32SS | 9.25d | 0d |  | Brayan Gómez López; Lady Daniela Díaz Sánchez; Computador [200%]; Escritorio [200%]; Internet [200%]; Silla [200%] | 48h | 2,956,800 |
| 34 | 1.2.2.3 | Especificaciones de casos de uso |  | 1d | 2020-11-18 | 2020-11-19 | 33 | 9.25d | 0d |  | Lady Daniela Díaz Sánchez; Laura Tatiana Gómez Castillo; Computador [200%]; Escritorio [200%]; Internet [200%]; Silla [200%] | 16h | 2,825,600 |
| 35 | 1.2.2.4 | Formato de Caso de Uso Extendido |  | 2d | 2020-11-18 | 2020-11-20 | 34SS | 9.25d |  |  | Brayan Gómez López; Yáxul Santiago Cárdenas Hincapié; Computador [200%]; Escritorio [200%]; Internet [200%]; Silla [200%] | 32h | 2,891,200 |
| 36 | 1.2.3 | **Versionamiento** |  | 5d | 2020-11-13 | 2020-11-20 |  | 4.25d |  |  |  | 160h | 6,176,000 |
| 37 | 1.2.3.1 | GitHub |  | 5d | 2020-11-13 | 2020-11-20 | 32SS | 3.62d | 0d |  | Brayan Gómez López; Lady Daniela Díaz Sánchez; Laura Tatiana Gómez Castillo; Yáxul Santiago Cárdenas Hincapié; Computador [400%]; Escritorio [400%]; Internet [400%]; Silla [400%] | 160h | 6,176,000 |
| 38 | 1.2.4 | **Modelo Entidad Relación** |  | 3d | 2020-11-20 | 2020-11-24 |  | 4.75d |  |  |  | 72h | 8,575,200 |
| 39 | 1.2.4.1 | MER |  | 1d | 2020-11-20 | 2020-11-20 | 37 | 4.75d | 0d |  | Brayan Gómez López; Computador; Escritorio; Internet; Silla | 8h | 1,412,800 |
| 40 | 1.2.4.2 | Modelo Relación |  | 2d | 2020-11-20 | 2020-11-24 | 39 | 4.75d | 0d |  | Lady Daniela Díaz Sánchez; Laura Tatiana Gómez Castillo; Yáxul Santiago Cárdenas Hincapié; Computador [300%]; Escritorio [300%]; Internet [300%]; Silla [300%] | 48h | 4,336,800 |
| 41 | 1.2.4.3 | Diccionario de datos |  | 2d | 2020-11-20 | 2020-11-24 | 40SS | 4.75d | 0d |  | Lady Daniela Díaz Sánchez; Laura Tatiana Gómez Castillo; Computador [200%]; Escritorio [200%]; Internet [200%]; Silla [200%] | 16h | 2,825,600 |
| 42 | 1.2.5 | **Diagramas UML clases** |  | 0.62d | 2020-11-24 | 2020-11-24 |  | 4.75d |  |  |  | 10h | 2,801,000 |
| 43 | 1.2.5.1 | Diagrama de clases |  | 5h | 2020-11-24 | 2020-11-24 | 41 | 4.75d | 0d |  | Brayan Gómez López; Yáxul Santiago Cárdenas Hincapié; Computador [200%]; Escritorio [200%]; Internet [200%]; Silla [200%] | 10h | 2,801,000 |
| 44 | 1.2.6 | **Prototipo no funcional** |  | 10d | 2020-11-13 | 2020-11-25 |  | 4.25d |  |  |  | 193.25h | 6,312,325 |
| 45 | 1.2.6.1 | HTML |  | 1.4w | 2020-11-13 | 2020-11-25 | 37SS | 4.25d | 0d |  | Lady Daniela Díaz Sánchez; Laura Tatiana Gómez Castillo; Computador [200%]; Escritorio [200%]; Internet [200%]; Silla [200%] | 87h | 3,116,700 |
| 46 | 1.2.6.2 | CSS |  | 1.68w | 2020-11-13 | 2020-11-25 | 45SS | 4.25d |  |  | Brayan Gómez López; Yáxul Santiago Cárdenas Hincapié; Computador [200%]; Escritorio [200%]; Internet [200%]; Silla [200%] | 106.25h | 3,195,625 |
| 47 | 1.2.7 | **Diagrama de gantt** |  | 5.12d | 2020-11-21 | 2020-11-25 |  |  |  |  |  | 24h | 2,898,400 |
| 48 | 1.2.7.1 | Project |  | 1.5d | 2020-11-24 | 2020-11-25 | 43SS | 4.75d | 0d | start no earlier than 2020-11-21 | Laura Tatiana Gómez Castillo; Lady Daniela Díaz Sánchez; Computador [200%]; Escritorio [200%]; Internet [200%]; Silla [200%] | 24h | 2,858,400 |
| 49 | 1.2.7.2 | FIN DE PLANEACION | milestone | 0d | 2020-11-25 | 2020-11-25 | 48 | 4.75d |  |  | Servicio de Luz |  | 40,000 |
| 50 | 2 | Ejecución | manual | 1d | 2020-11-09 | 2020-11-09 |  |  |  |  |  |  |  |
| 51 | 3 | Base de Datos | manual | 1d? | 2020-11-09 | 2020-11-09 |  |  |  |  |  |  |  |
| 52 | 4 | Construcción de la Base de Datos | manual | 1d? | 2020-11-09 | 2020-11-09 |  |  |  |  |  |  |  |
| 53 | 5 | Datos insertados en la Base de Datos | manual | 1d? | 2020-11-09 | 2020-11-09 |  |  |  |  |  |  |  |
| 54 | 6 | Consultas y Joins en la Base de Datos | manual | 1d | 2020-11-09 | 2020-11-09 |  |  |  |  |  |  |  |
| 55 | 7 | Prototipo no funcional | manual | 1d | 2020-11-09 | 2020-11-09 |  |  |  |  |  |  |  |
| 56 | 8 | Mockup | manual | 1d? | 2020-11-09 | 2020-11-09 |  |  |  |  |  |  |  |
| 57 | 9 | Codificación y manejo de CRUD | manual | 1d | 2020-11-09 | 2020-11-09 |  |  |  |  |  |  |  |
| 58 | 10 | Conexión base de datos | manual | 1d | 2020-11-09 | 2020-11-09 |  |  |  |  |  |  |  |
| 59 | 11 | Crud funcional módulos del sistema | manual | 1d | 2020-11-09 | 2020-11-09 |  |  |  |  |  |  |  |
| 60 | 12 | Caso de uso 001 | manual | 1d | 2020-11-09 | 2020-11-09 |  |  |  |  |  |  |  |
| 61 | 13 | Caso de uso n.. | manual | 1d | 2020-11-09 | 2020-11-09 |  |  |  |  |  |  |  |
| 62 | 14 | Evaluación | manual | 1d | 2020-11-09 | 2020-11-09 |  |  |  |  |  |  |  |
| 63 | 15 | Modelo De Calidad | manual | 1d | 2020-11-09 | 2020-11-09 |  |  |  |  |  |  |  |
| 64 | 16 | Construcción de manuales | manual | 1d | 2020-11-09 | 2020-11-09 |  |  |  |  |  |  |  |
| 65 | 17 | Usuario | manual | 1d | 2020-11-09 | 2020-11-09 |  |  |  |  |  |  |  |
| 66 | 18 | Operación | manual | 1d | 2020-11-09 | 2020-11-09 |  |  |  |  |  |  |  |
